# META 10. - Adelanto de Liquidación de Comisiones

Schedule from MS Project, 2015-07-06 to 2015-08-05, 4 hours a day.
Seguros Caroni

## Calendars

- proyecto con OTRS: Mon-Fri 09:00-13:00, 15:00-19:00; Sat-Sun off.

## Resources

| Resource |
| --- |
| Jairo |
| Jairo Gonzalez |
| José Coucouvinos |
| José Vera |
| José Larez |
| José Peñaloza |
| Purificación Bastardo |
| Migliannys Lopez |
| Milvia Suarez |
| Rosalba Morales |

## Schedule

| ID | WBS | Task | Duration | Start | Finish | Predecessors | Total slack | Constraint | Resources | Work |
| --- | --- | --- | --- | --- | --- | --- | --- | --- | --- | --- |
| 1 | 1 | **INC 16. - Adelanto de Liquidación de Comisiones. - Especialista: José Coucouvinos** | 46d | 2015-07-06 09:00 | 2015-08-05 19:00 |  | 0d |  |  | 184h |
| 2 | 1.1 | **Levantamiento del Requerimiento** | 1d | 2015-07-06 09:00 | 2015-07-06 13:00 |  | 0d |  |  | 4h |
| 3 | 1.1.1 | Analisis de los procesos de creacion, reversos, extornos y liquidaciones de comisiones y bonos al intermediaio. | 4h | 2015-07-06 09:00 | 2015-07-06 13:00 |  | 0d | start no earlier than 2015-07-06 08:00 | José Coucouvinos | 4h |
| 4 | 1.2 | **Analisis y Diseño** | 1d | 2015-07-06 15:00 | 2015-07-06 19:00 | 2 | 0d |  |  | 4h |
| 5 | 1.2.1 | Reunión con el usuario para aclarar detalles sobre su requerimiento. | 4h | 2015-07-06 15:00 | 2015-07-06 19:00 | 3 | 0d | start no earlier than 2013-11-06 08:00 | José Coucouvinos | 4h |
| 6 | 1.3 | **Desarrollo** | 40d | 2015-07-07 09:00 | 2015-08-03 19:00 | 4 | 0d |  |  | 160h |
| 7 | 1.3.1 | Modificar el formulario de mantenimiento de intermediario para incluir el tilde de adelanto de comisiones y bonos. | 16h | 2015-07-07 09:00 | 2015-07-08 19:00 | 5 | 0d | start no earlier than 2013-11-07 08:00 | José Coucouvinos | 16h |
| 8 | 1.3.2 | Modificar el paquete PR_OPER_INTER, para crear los procesos de adelantos de comisiones y bonos del intermediario. | 48h | 2015-07-09 09:00 | 2015-07-16 19:00 | 7 | 0d | start no earlier than 2013-07-01 08:00 | José Coucouvinos | 48h |
| 9 | 1.3.3 | Modificar el paquete PR_OPER_INTER, para crear los procesos de reversos y extornos de adelantos de comisiones y bonos del intermediario. | 56h | 2015-07-17 09:00 | 2015-07-27 19:00 | 8 | 0d | start no earlier than 2013-07-01 08:00 | José Coucouvinos | 56h |
| 10 | 1.3.4 | Modificar el paquete PR_OPER_INTER, para incluir en el proceso de liquidacion de intermediario, los anticipos, reversos y extornos de comisiones y bonos. | 24h | 2015-07-28 09:00 | 2015-07-30 19:00 | 9 | 0d | start no earlier than 2013-07-01 08:00 | José Coucouvinos | 24h |
| 11 | 1.3.5 | Modificar los conceptos de egreso para incluir las operaciones de adelantos en los procesos contables | 16h | 2015-07-31 09:00 | 2015-08-03 19:00 | 10 | 0d | start no earlier than 2013-07-01 08:00 | José Coucouvinos | 16h |
| 12 | 1.4 | **Solicitud de Certificación y Pruebas** | 2d | 2015-08-04 09:00 | 2015-08-04 19:00 | 6 | 0d |  |  | 8h |
| 13 | 1.4.1 | Solicitud de Certificación | 2h | 2015-08-04 09:00 | 2015-08-04 11:00 | 11 | 0d | start no earlier than 2013-07-02 08:00 | José Peñaloza | 2h |
| 14 | 1.4.2 | Pruebas con el usuario | 6h | 2015-08-04 11:00 | 2015-08-04 19:00 | 13 | 0d | start no earlier than 2013-07-02 08:00 | José Peñaloza | 6h |
| 15 | 1.5 | **Ajustes de Certificación** | 1d | 2015-08-05 09:00 | 2015-08-05 13:00 | 12 | 0d |  |  | 4h |
| 16 | 1.5.1 | Ajustes y adecuaciones | 4h | 2015-08-05 09:00 | 2015-08-05 13:00 |  | 0d |  | José Coucouvinos | 4h |
| 17 | 1.6 | **Puesta en Produccion** | 1d | 2015-08-05 15:00 | 2015-08-05 19:00 | 15 | 0d |  |  | 4h |
| 18 | 1.6.1 | Pasar las adecuaciones del sistema al ambiente de producción. | 4h | 2015-08-05 15:00 | 2015-08-05 19:00 | 16 | 0d | start no earlier than 2013-07-04 08:00 | José Coucouvinos | 4h |
